| code | name | division | disciplines | floors | status | plannedStart | plannedFinish | baselineStart | baselineFinish | durationHours | plannedProgressPercent | approvedProgressPercent | budgetAtCompletion | earnedValue | criticalPath |
| --- | --- | --- | --- | --- | --- | --- | --- | --- | --- | --- | --- | --- | --- | --- | --- |
| RM-C-1A-B01-01-A-111 | Earth work - Backfilling For Foundation - 1A - B-01 - BL-01 - A - 31 | DIVISION 31 - EARTHWORK | SITE | SS | Completed | 2025-04-17 | 2025-04-27 | 2025-05-11 | 2025-05-20 | 64.0 | 100.0 | 100.0 | 201151.68 | 201151.68 |  |
| RM-C-1A-B01-01-A-122 | Earth work - Excavation For PC - 1A - B-01 - BL-01 - A - 31 | DIVISION 31 - EARTHWORK | SITE | SS | Completed | 2025-04-27 | 2025-05-06 | 2025-05-20 | 2025-05-31 | 64.0 | 100.0 | 100.0 | 4279.8 | 4279.8 |  |
| RM-C-1A-B01-01-A-133 | Anti-termite Under PC Concrete - 1A - B-01 - BL-01 - A - 31 | DIVISION 31 - EARTHWORK | SITE | SS | Completed | 2025-05-07 | 2025-05-12 | 2025-05-31 | 2025-06-04 | 32.0 | 100.0 | 100.0 | 3587.83 | 3587.83 |  |
| RM-C-1A-B01-01-A-144 | Foundation PC - 1A - B-01 - BL-01 - A - 3 | DIVISION 03 - CONCRETE | STR | SS | Completed | 2025-05-12 | 2025-05-17 | 2025-06-04 | 2025-06-15 | 32.0 | 100.0 | 100.0 | 58614.3 | 58614.3 |  |
| RM-C-1A-B01-01-A-165 | Foundation RC - 1A - B-01 - BL-01 - A - 3 | DIVISION 03 - CONCRETE | STR | SS | Completed | 2025-09-06 | 2025-10-16 | 2025-10-11 | 2025-11-19 | 272.0 | 100.0 | 100.0 | 227638.26 | 227638.26 |  |
| RM-C-1A-B01-01-A-155 | UG Utilities - 1A - B-01 - BL-01 - A - 22 | DIVISION 22 - PLUMBING | PLU | SS | Completed | 2025-09-23 | 2025-10-16 | 2025-10-28 | 2025-11-20 | 160.0 | 100.0 | 100.0 | 70212.46 | 70212.46 |  |
| RM-C-1A-B01-01-A-101 | Formwork & Reinforcement For Vertical Wall Elements For Ground Floor - 1A - B-01 - BL-01 - A - 3 | DIVISION 03 - CONCRETE | STR | GF | Completed | 2025-12-16 | 2026-02-25 | 2026-01-20 | 2026-04-02 | 472.0 | 100.0 | 100.0 | 168051.78 | 168051.78 |  |
| RM-C-1A-B01-01-A-102 | Electrical Conduits & Fittings Embedded in Walls For Ground Floor - 1A - B-01 - BL-01 - A - 26 | DIVISION 26 - ELECTRICAL | ELE | GF | Completed | 2025-12-21 | 2026-02-07 | 2026-01-24 | 2026-03-25 | 328.0 | 100.0 | 100.0 | 13799.18 | 13799.18 |  |
| RM-C-1A-B01-01-A-103 | Mechanical Pipes & Fittings Embedded in Walls For Ground Floor - 1A - B-01 - BL-01 - A - 22 | DIVISION 22 - PLUMBING | PLU | GF | Completed | 2025-12-22 | 2026-02-25 | 2026-01-25 | 2026-04-04 | 436.0 | 100.0 | 65.28 | 9565.71 | 6244.5 |  |
| RM-C-1A-B01-01-A-104 | Formwork & Reinforcement For Flat Slabs & Stairs For Ground Floor - 1A - B-01 - BL-01 - A - 3 | DIVISION 03 - CONCRETE | STR | GF | Completed | 2025-12-30 | 2026-02-25 | 2026-02-02 | 2026-04-02 | 380.0 | 100.0 | 99.5 | 168051.78 | 167211.52 |  |
| RM-C-1A-B01-01-A-105 | HVAC Piping - 1A - B-01 - BL-01 - A - 23 | DIVISION 23 - HEATING, VENTILATION & AIR CONDITIONING (HVAC) | MEP | GF, FF, UF, RF | Completed | 2026-01-05 | 2026-04-02 | 2026-01-20 | 2026-02-12 | 518.0 | 100.0 | 97.38 | 33266.79 | 32395.2 |  |
| RM-C-1A-B01-01-A-106 | Concrete Pouring ( Wall & Slabs ) Elements For Ground Floor - 1A - B-01 - BL-01 - A - 3 | DIVISION 03 - CONCRETE | STR | GF | Completed | 2026-01-10 | 2026-02-25 | 2026-03-08 | 2026-04-21 | 308.0 | 100.0 | 99.35 | 109298.9 | 108588.46 |  |
| RM-C-1A-B01-01-A-107 | Formwork & Reinforcement For Vertical Wall Elements For First Floor - 1A - B-01 - BL-01 - A - 3 | DIVISION 03 - CONCRETE | STR | FF | Completed | 2026-01-19 | 2026-02-26 | 2026-02-23 | 2026-03-12 | 244.0 | 100.0 | 100.0 | 168051.78 | 168051.78 |  |
| RM-C-1A-B01-01-A-128 | Repair Concrete For External Wall Surfaces - 1A - B-01 - BL-01 - A - 32 | DIVISION 32 - EXTERIOR IMPROVEMENTS | SITE | GF, FF, UF | InProgress | 2026-01-24 | 2026-05-23 | 2026-03-17 | 2026-05-24 | 742.0 | 100.0 | 0 | 4852.36 | 0.0 |  |
| RM-C-1A-B01-01-A-118 | Repair Concrete For Internal Wall Surfaces - 1A - B-01 - BL-01 - A - 9 | DIVISION 09 - FINISHES | ARC | GF, FF, UF | InProgress | 2026-01-26 | 2026-07-13 | 2026-05-03 | 2026-11-17 | 1039.6 | 100.0 | 87.47 | 4852.36 | 4244.36 |  |
| RM-C-1A-B01-01-A-109 | Mechanical Pipes & Fittings Embedded in Walls For First Floor - 1A - B-01 - BL-01 - A - 22 | DIVISION 22 - PLUMBING | PLU | FF | Completed | 2026-01-26 | 2026-02-26 | 2026-05-03 | 2026-07-23 | 196.0 | 100.0 | 87.5 | 9565.71 | 8370.0 |  |
| RM-C-1A-B01-01-A-108 | Formwork & Reinforcement For Flat Slabs & Stairs For First Floor - 1A - B-01 - BL-01 - A - 3 | DIVISION 03 - CONCRETE | STR | FF | Completed | 2026-02-08 | 2026-02-26 | 2026-04-22 | 2026-04-25 | 108.0 | 100.0 | 99.5 | 168051.78 | 167211.52 |  |
| RM-C-1A-B01-01-A-113 | Formwork & Reinforcement For Vertical Wall Elements-Roof - 1A - B-01 - BL-01 - A - 3 | DIVISION 03 - CONCRETE | STR | RF | Completed | 2026-02-16 | 2026-04-16 | 2026-02-24 | 2026-02-25 | 326.0 | 100.0 | 100.0 | 84025.89 | 84025.89 |  |
| RM-C-1A-B01-01-A-110 | Electrical Conduits & Fittings Embedded in Walls For First Floor - 1A - B-01 - BL-01 - A - 26 | DIVISION 26 - ELECTRICAL | ELE | FF | Completed | 2026-02-16 | 2026-02-26 | 2026-01-29 | 2026-02-01 | 52.0 | 100.0 | 100.0 | 18398.9 | 18398.9 |  |
| RM-C-1A-B01-01-A-112 | Concrete Pouring ( Wall & Slabs ) Elements For First Floor - 1A - B-01 - BL-01 - A - 3 | DIVISION 03 - CONCRETE | STR | FF | Completed | 2026-02-17 | 2026-03-25 | 2026-02-17 | 2026-02-21 | 166.0 | 100.0 | 99.35 | 109298.9 | 108588.46 |  |
| RM-C-1A-B01-01-A-115 | Electrical Conduits & Fittings Embedded in Walls For Roof - 1A - B-01 - BL-01 - A - 26 | DIVISION 26 - ELECTRICAL | ELE | RF | Completed | 2026-02-26 | 2026-04-02 | 2026-04-05 | 2026-04-12 | 178.0 | 100.0 | 0 | 13799.18 | 0.0 |  |
| RM-C-1A-B01-01-A-114 | Formwork & Reinforcement For Flat Slabs & Stairs-Roof - 1A - B-01 - BL-01 - A - 3 | DIVISION 03 - CONCRETE | STR | RF | Completed | 2026-02-28 | 2026-04-16 | 2026-04-05 | 2026-04-09 | 268.0 | 100.0 | 100.0 | 63019.42 | 63019.42 |  |
| RM-C-1A-B01-01-A-116 | Mechanical Pipes & Fittings Embedded in Walls For Roof - 1A - B-01 - BL-01 - A - 22 | DIVISION 22 - PLUMBING | PLU | RF | Completed | 2026-02-28 | 2026-04-02 | 2026-04-05 | 2026-04-14 | 172.0 | 100.0 | 0 | 9565.71 | 0.0 |  |
| RM-C-1A-B01-01-A-119 | Parapet Elements-Roof - 1A - B-01 - BL-01 - A - 3 | DIVISION 03 - CONCRETE | STR | RF | InProgress | 2026-03-15 | 2026-05-11 | 2026-08-04 | 2026-08-16 | 366.0 | 0 | 100.0 | 21006.47 | 21006.47 |  |
| RM-C-1A-B01-01-A-117 | Concrete Pouring ( Wall & Slabs ) Elements For Roof - 1A - B-01 - BL-01 - A - 3 | DIVISION 03 - CONCRETE | STR | RF | Completed | 2026-03-16 | 2026-04-16 | 2026-04-09 | 2026-04-21 | 184.0 | 100.0 | 100.0 | 54649.45 | 54649.45 |  |
| RM-C-1A-B01-01-A-168 | Waterproofing for Foundation - 1A - B-01 - BL-01 - A - 7 | DIVISION 07 - THERMAL & MOISTURE PROTECTION | ARC | SS | Completed | 2026-04-14 | 2026-04-15 | 2026-05-05 | 2026-05-10 | 16.0 | 100.0 | 100.0 | 2314.55 | 2314.55 |  |
| RM-C-1A-B01-01-A-131 | UG Water Tank - 1A - B-01 - BL-01 - A - 22 | DIVISION 22 - PLUMBING | PLU | SS | InProgress | 2026-04-20 | 2026-06-27 | 2026-06-10 | 2026-06-24 | 434.4 | 100.0 | 80.0 | 42890.97 | 34312.78 |  |
| RM-C-1A-B01-01-A-166 | Boundary wall & Utility Service Cabinet & Booster Pump-Foundation - 1A - B-01 - BL-01 - A - 3 | DIVISION 03 - CONCRETE | STR | SS | NotStarted | 2026-05-10 | 2026-05-13 | 2026-04-30 | 2026-05-05 | 32.0 | 100.0 | 100.0 | 29768.73 | 29768.73 |  |
| RM-C-1A-B01-01-A-126 | Boundary wall - 1A - B-01 - BL-01 - A - 3 | DIVISION 03 - CONCRETE | STR | GF | NotStarted | 2026-05-14 | 2026-05-23 | 2026-05-10 | 2026-05-19 | 64.0 | 100.0 | 39.0 | 122191.73 | 47654.77 |  |
| RM-C-1A-B01-01-A-130 | Roof & Upper Roof Waterproofing - 1A - B-01 - BL-01 - A - 7 | DIVISION 07 - THERMAL & MOISTURE PROTECTION | ARC | UF, RF | NotStarted | 2026-08-13 | 2026-08-18 | 2026-10-07 | 2026-10-12 | 32.0 | 0 | 24.7 | 41695.8 | 10298.86 |  |
| RM-C-1A-B01-01-A-120 | HVAC (Ventilation Fans System) - 1A - B-01 - BL-01 - A - 23 | DIVISION 23 - HEATING, VENTILATION & AIR CONDITIONING (HVAC) | MEP | GF, FF, UF, RF | NotStarted | 2026-08-25 | 2026-09-03 | 2026-10-04 | 2026-10-13 | 64.0 | 0 | 0 | 12819.88 | 0.0 |  |
| RM-C-1A-B01-01-A-123 | Wet Area Waterproofing - 1A - B-01 - BL-01 - A - 7 | DIVISION 07 - THERMAL & MOISTURE PROTECTION | ARC | GF, FF, UF | NotStarted | 2026-09-14 | 2026-09-19 | 2026-10-07 | 2026-10-12 | 32.0 | 0 | 7.52 | 8298.3 | 624.03 |  |
| RM-C-1A-B01-01-A-127 | Mechanical Pipes & Fittings - 1A - B-01 - BL-01 - A - 22 | DIVISION 22 - PLUMBING | PLU | GF, FF, UF, RF | NotStarted | 2026-09-19 | 2026-10-14 | 2026-10-12 | 2026-11-05 | 168.0 | 0 | 70.41 | 3188.57 | 2245.07 |  |
| RM-C-1A-B01-01-A-129 | Wet Area Flooring, Walls and Skirting - 1A - B-01 - BL01 - A - 9 - 1A - B-01 - BL-01 - A - 9 | DIVISION 09 - FINISHES | ARC | GF, FF, UF | NotStarted | 2026-10-14 | 2026-10-25 | 2026-11-05 | 2026-11-16 | 72.0 | 0 | 0 | 11504.96 | 0.0 |  |
| RM-C-1A-B01-01-A-121 | Internal Flooring and Skirting - 1A - B-01 - BL-01 - A - 9 | DIVISION 09 - FINISHES | ARC | GF, FF, UF | NotStarted | 2026-10-22 | 2026-11-01 | 2026-11-21 | 2026-11-30 | 64.0 | 0 | 0 | 40119.74 | 0.0 |  |
| RM-C-1A-B01-01-A-124 | LC Wiring - 1A - B-01 - BL-01 - A - 27 | DIVISION 27 - COMMUNICATIONS | ELE | GF, FF, UF | NotStarted | 2026-11-10 | 2026-11-19 | 2026-10-20 | 2026-10-29 | 64.0 | 0 | 0 | 539.45 | 0.0 |  |
| RM-C-1A-B01-01-A-125 | LV Cabling and wiring - 1A - B-01 - BL-01 - A - 26 | DIVISION 26 - ELECTRICAL | ELE | GF, FF, UF, RF | NotStarted | 2026-11-19 | 2026-11-29 | 2026-10-29 | 2026-11-08 | 64.0 | 0 | 0 | 22081.84 | 0.0 |  |
| RM-C-1A-B01-01-A-135 | Roof Flooring and Skirting - 1A - B-01 - BL-01 - A - 9 | DIVISION 09 - FINISHES | ARC | UF | NotStarted | 2026-11-29 | 2026-12-08 | 2026-11-08 | 2026-11-17 | 64.0 | 0 | 0 | 11066.57 | 0.0 |  |
| RM-C-1A-B01-01-A-134 | Wet Area False Ceiling - 1A - B-01 - BL01 - A - 9 - 1A - B-01 - BL-01 - A - 9 | DIVISION 09 - FINISHES | ARC | GF, FF, UF | NotStarted | 2026-12-08 | 2026-12-23 | 2026-11-17 | 2026-12-02 | 104.0 | 0 | 0 | 10489.89 | 0.0 |  |
| RM-C-1A-B01-01-A-138 | Solar System (Water Heater incl. Panel & Storage tank ) - 1A - B-01 - BL-01 - A - 22 | DIVISION 22 - PLUMBING | PLU | RF | NotStarted | 2026-12-12 | 2026-12-21 | 2026-11-21 | 2026-11-29 | 64.0 | 0 | 0 | 11095.77 | 0.0 |  |
| RM-C-1A-B01-01-A-136 | Entrance False Ceiling - 1A - B-01 - BL-01 - A - 9 | DIVISION 09 - FINISHES | ARC | GF | NotStarted | 2026-12-23 | 2026-12-28 | 2026-12-02 | 2026-12-07 | 32.0 | 0 | 0 | 1766.85 | 0.0 |  |
| RM-C-1A-B01-01-A-137 | Stairs Finishes - 1A - B-01 - BL-01 - A - 9 | DIVISION 09 - FINISHES | ARC | GF, FF | NotStarted | 2026-12-28 | 2027-01-06 | 2026-12-07 | 2026-12-16 | 64.0 | 0 | 0 | 26465.37 | 0.0 |  |
| RM-C-1A-B01-01-A-141 | Installation of Windows - 1A - B-01 - BL-01 - A - 8 | DIVISION 08 - DOOR & WINDOWS | ARC | GF, FF, UF | NotStarted | 2027-01-27 | 2027-02-25 | 2027-01-07 | 2027-02-01 | 168.0 | 0 | 0 | 72293.2 | 0.0 |  |
| RM-C-1A-B01-01-A-140 | Installation of Doors incl. Hardware - 1A - B-01 - BL-01 - A - 8 | DIVISION 08 - DOOR & WINDOWS | ARC | GF, FF, UF | NotStarted | 2027-01-28 | 2027-02-07 | 2027-01-17 | 2027-01-26 | 64.0 | 0 | 0 | 80487.0 | 0.0 |  |
| RM-C-1A-B01-01-A-169 | Water Meter and House Connection - 1A - B-01 - BL-01 - A - 22 | DIVISION 22 - PLUMBING | PLU | GF | NotStarted | 2027-01-30 | 2027-02-02 | 2027-01-07 | 2027-01-12 | 32.0 | 0 | 0 | 12863.74 | 0.0 |  |
| RM-C-1A-B01-01-A-139 | Stairs Handrail - 1A - B-01 - BL-01 - A - 5 | DIVISION 05 - METALS | STR | GF, FF | NotStarted | 2027-01-31 | 2027-02-04 | 2027-01-31 | 2027-02-04 | 32.0 | 0 | 0 | 10364.08 | 0.0 | True |
| RM-C-1A-B01-01-A-142 | Internal Painting (Primary & Final Finish ) - 1A - B-01 - BL-01 - A - 9 | DIVISION 09 - FINISHES | ARC | GF, FF, UF | NotStarted | 2027-02-04 | 2027-02-15 | 2027-02-04 | 2027-02-15 | 64.0 | 0 | 30.92 | 50607.7 | 15647.9 | True |
| RM-C-1A-B01-01-A-132 | Boundary wall Finish Work - 1A - B-01 - BL-01 - A - 32 | DIVISION 32 - EXTERIOR IMPROVEMENTS | SITE | GF | NotStarted | 2027-02-07 | 2027-02-20 | 2027-01-26 | 2027-02-04 | 64.0 | 0 | 0 | 26183.94 | 0.0 |  |
| RM-C-1A-B01-01-A-149 | Wet Area Sanitary Fixtures and Accessories - 1A - B-01 - BL-01 - A - 22 | DIVISION 22 - PLUMBING | PLU | GF, FF, UF | NotStarted | 2027-02-16 | 2027-03-01 | 2027-02-16 | 2027-03-01 | 64.0 | 0 | 0 | 32145.37 | 0.0 | True |
| RM-C-1A-B01-01-A-148 | Internal Lighting - 1A - B-01 - BL-01 - A - 26 | DIVISION 26 - ELECTRICAL | ELE | GF, FF, UF | NotStarted | 2027-02-16 | 2027-03-01 | 2027-02-16 | 2027-03-01 | 64.0 | 0 | 0 | 26670.49 | 0.0 |  |
| RM-C-1A-B01-01-A-146 | LC Wiring Devices - 1A - B-01 - BL-01 - A - 27 | DIVISION 27 - COMMUNICATIONS | ELE | GF, FF, UF | NotStarted | 2027-02-16 | 2027-03-01 | 2027-02-16 | 2027-03-01 | 64.0 | 0 | 0 | 18951.6 | 0.0 |  |
| RM-C-1A-B01-01-A-143 | External Texture Painting - 1A - B-01 - BL-01 - A - 32 | DIVISION 32 - EXTERIOR IMPROVEMENTS | SITE | GF, FF, UF | NotStarted | 2027-02-25 | 2027-03-15 | 2027-02-04 | 2027-02-15 | 64.0 | 0 | 0 | 41968.94 | 0.0 |  |
| RM-C-1A-B01-01-A-153 | Glass Partitions & Mirrors - 1A - B-01 - BL-01 - A - 9 | DIVISION 09 - FINISHES | ARC | GF, FF, UF | NotStarted | 2027-03-01 | 2027-03-07 | 2027-03-01 | 2027-03-07 | 32.0 | 0 | 0 | 16538.41 | 0.0 | True |
| RM-C-1A-B01-01-A-147 | LV Wiring Devices - 1A - B-01 - BL-01 - A - 26 | DIVISION 26 - ELECTRICAL | ELE | GF, FF, UF, RF | NotStarted | 2027-03-01 | 2027-03-17 | 2027-03-01 | 2027-03-17 | 64.0 | 0 | 0 | 50417.83 | 0.0 |  |
| RM-C-1A-B01-01-A-154 | Install Kitchen Cabinets, Countertop , Vanities and Accessories - 1A - B-01 - BL-01 - A - 6 | DIVISION 06 - WOOD, PLASTIC & COMPOSITES | ARC | GF, FF | NotStarted | 2027-03-08 | 2027-03-22 | 2027-03-08 | 2027-03-22 | 64.0 | 0 | 0 | 70818.73 | 0.0 | True |
| RM-C-1A-B01-01-A-150 | External Lighting - 1A - B-01 - BL-01 - A - 32 | DIVISION 32 - EXTERIOR IMPROVEMENTS | SITE | GF, UF | NotStarted | 2027-03-15 | 2027-03-24 | 2027-02-16 | 2027-03-01 | 64.0 | 0 | 0 | 12600.47 | 0.0 |  |
| RM-C-1A-B01-01-A-151 | Louver & balustrade - 1A - B-01 - BL-01 - A - 32 | DIVISION 32 - EXTERIOR IMPROVEMENTS | SITE | GF, FF, UF | NotStarted | 2027-03-15 | 2027-03-24 | 2027-02-16 | 2027-03-01 | 64.0 | 0 | 0 | 9613.82 | 0.0 |  |
| RM-C-1A-B01-01-A-160 | Fire Extinguishers - 1A - B-01 - BL-01 - A - 22 | DIVISION 22 - PLUMBING | PLU | GF, FF | NotStarted | 2027-03-16 | 2027-03-24 | 2027-02-20 | 2027-03-04 | 64.0 | 0 | 0 | 2620.31 | 0.0 |  |
| RM-C-1A-B01-01-A-167 | Main DB & Submain DB's - 1A - B-01 - BL-01 - A - 26 | DIVISION 26 - ELECTRICAL | ELE | GF, UF | NotStarted | 2027-03-24 | 2027-04-03 | 2027-03-17 | 2027-03-27 | 64.0 | 0 | 0 | 20546.01 | 0.0 |  |
| RM-C-1A-B01-01-A-156 | Hardscape and Paving - 1A - B-01 - BL-01 - A - 32 | DIVISION 32 - EXTERIOR IMPROVEMENTS | SITE | GF | NotStarted | 2027-03-24 | 2027-04-03 | 2027-03-17 | 2027-03-27 | 64.0 | 0 | 0 | 45520.1 | 0.0 |  |
| RM-C-1A-B01-01-A-161 | Utility Service Cabinet & Booster Pump - 1A - B-01 - BL-01 - A - 32 | DIVISION 32 - EXTERIOR IMPROVEMENTS | SITE | GF | NotStarted | 2027-04-03 | 2027-04-12 | 2027-03-27 | 2027-04-05 | 64.0 | 0 | 0 | 20313.79 | 0.0 |  |
| RM-C-1A-B01-01-A-163 | Carport Shade - 1A - B-01 - BL-01 - A - 32 | DIVISION 32 - EXTERIOR IMPROVEMENTS | SITE | GF | NotStarted | 2027-04-12 | 2027-04-21 | 2027-04-05 | 2027-04-14 | 64.0 | 0 | 0 | 57741.64 | 0.0 |  |
| RM-C-1A-B01-01-A-157 | Gas Supply System - 1A - B-01 - BL-01 - A - 22 | DIVISION 22 - PLUMBING | PLU | GF | NotStarted | 2027-04-20 | 2027-04-29 | 2027-05-22 | 2027-05-31 | 64.0 | 0 | 0 | 8535.21 | 0.0 |  |
| RM-C-1A-B01-01-A-170 | EV Charger - 1A - B-01 - BL-01 - A - 26 | DIVISION 26 - ELECTRICAL | ELE | GF | NotStarted | 2027-04-20 | 2027-05-01 | 2027-04-01 | 2027-04-11 | 70.0 | 0 | 0 | 477.2 | 0.0 |  |
| RM-C-1A-B01-01-A-164 | Signage - 1A - B-01 - BL-01 - A - 32 | DIVISION 32 - EXTERIOR IMPROVEMENTS | SITE | GF | NotStarted | 2027-05-09 | 2027-05-19 | 2027-04-27 | 2027-05-03 | 40.0 | 0 | 0 | 366.64 | 0.0 |  |
| RM-C-1A-B01-01-A-162 | Electrical Meter - 1A - B-01 - BL-01 - A - 26 | DIVISION 26 - ELECTRICAL | ELE | GF | NotStarted | 2027-05-12 | 2027-05-22 | 2027-05-22 | 2027-05-26 | 32.0 | 0 | 0 | 11522.53 | 0.0 |  |
| RM-C-1A-B01-01-A-159 | Softscape and Irrigation - 1A - B-01 - BL-01 - A - 32 | DIVISION 32 - EXTERIOR IMPROVEMENTS | SITE | GF | NotStarted | 2027-05-27 | 2027-06-06 | 2027-04-28 | 2027-05-06 | 64.0 | 0 | 0 | 32741.42 | 0.0 |  |
| RM-C-1A-B01-01-A-145 | HVAC Internal units ( Split unit ) - 1A - B-01 - BL-01 - A - 23 | DIVISION 23 - HEATING, VENTILATION & AIR CONDITIONING (HVAC) | MEP | GF, FF, UF | NotStarted | 2027-05-30 | 2027-06-07 | 2027-05-01 | 2027-05-09 | 64.0 | 0 | 0 | 56545.74 | 0.0 |  |
| RM-C-1A-B01-01-A-152 | HVAC External units ( Above Roof ) - 1A - B-01 - BL-01 - A - 23 | DIVISION 23 - HEATING, VENTILATION & AIR CONDITIONING (HVAC) | MEP | UF | NotStarted | 2027-06-08 | 2027-06-16 | 2027-05-10 | 2027-05-23 | 64.0 | 0 | 0 | 93887.27 | 0.0 |  |
